# 010101010010101001010101001010100101

Schedule from MS Project MPX, 2018-07-16 to 2019-07-10.

## Calendars

- Estándar: Mon-Fri 09:00 am-01:00 pm, 03:00 pm-07:00 pm; Sat-Sun off.

## Resources

| Resource |
| --- |
| Administrador de Contrato - Cliente |
| Líder Técnico - Cliente |
| Líder Funcional - Usuario Experto - Cliente |
| Funcionarios Técnicos - Cliente |
| Usuarios Finales - Cliente |
| Desarrollador PlanERP |
| Gerente de Proyecto PlanERP |
| Líder del Proyecto/Desarrollo PlanERP |
| Analista Procesos PlanERP |
| Analista de Calidad PlanERP |
| Especialista Base de Datos PlanERP |
| Consultor Especialista en Procesos de GADs PlanERP |

## Schedule

| ID | WBS | Task | Duration | Start | Finish | Predecessors |
| --- | --- | --- | --- | --- | --- | --- |
| 1 | 0 | 20190122- Plan del Proyecto de Implementacion del SIIM Daule | 294.29d | 2018-07-16 00:00 | 2019-07-10 00:00 |  |
| 2 | 0 | Programa de Implementación SIIM | 294.29d | 2018-07-16 00:00 | 2019-07-10 00:00 |  |
| 3 | 0 | FASE 1: Implementación de Módulos de Servicio al Cliente (SC) y Atención al Ciudadano (AC) | 159.57d | 2018-07-16 00:00 | 2019-01-25 00:00 |  |
| 4 | 0 | ETAPA 1: Preparación del Proyecto e Instalación del SIIM - Módulos SC y AC | 9d | 2018-07-16 00:00 | 2018-07-25 00:00 |  |
| 5 | 0 | Actividades de Gestión del Proyecto | 2.29d | 2018-07-16 00:00 | 2018-07-18 00:00 |  |
| 6 | 0 | Revisión de Información de Contrato y Anexos | 6h | 2018-07-16 00:00 | 2018-07-16 00:00 |  |
| 7 | 0 | Definir la Organización del Proyecto | 4h | 2018-07-16 00:00 | 2018-07-17 00:00 | 6 |
| 8 | 0 | Kick-off Interno del Proyecto | 6h | 2018-07-17 00:00 | 2018-07-18 00:00 | 7 |
| 9 | 0 | Preparación del kick-off del Proyecto | 1.14d | 2018-07-18 00:00 | 2018-07-19 00:00 |  |
| 10 | 0 | Comunicación con el Cliente | 4h | 2018-07-18 00:00 | 2018-07-18 00:00 | 8 |
| 11 | 0 | Crear la presentación del kick-off | 4h | 2018-07-18 00:00 | 2018-07-19 00:00 | 10 |
| 12 | 0 | Reunión de Kick-off | 0.29d | 2018-07-19 00:00 | 2018-07-19 00:00 |  |
| 13 | 0 | Realizar la reunión de kick-off | 2h | 2018-07-19 00:00 | 2018-07-19 00:00 | 11 |
| 14 | 0 | Entrega e Instalación del Software | 4.29d | 2018-07-19 00:00 | 2018-07-25 00:00 |  |
| 15 | 0 | Instalar SIIM en Servidor | 4d | 2018-07-19 00:00 | 2018-07-24 00:00 | 12 |
| 16 | 0 | 1 Dirección de Desarrollo Territorial (No incluye Catastro) | 2h | 2018-07-19 00:00 | 2018-07-19 00:00 |  |
| 17 | 0 | 4 Dirección de Justicia y Vigilancia | 2h | 2018-07-19 00:00 | 2018-07-19 00:00 | 16 |
| 18 | 0 | 5 Dirección de Desarrollo Humano y Social | 2h | 2018-07-19 00:00 | 2018-07-20 00:00 | 17 |
| 19 | 0 | 8.3 Rentas | 2h | 2018-07-20 00:00 | 2018-07-20 00:00 | 18 |
| 20 | 0 | 8.4 Tesorería | 2h | 2018-07-20 00:00 | 2018-07-20 00:00 | 19 |
| 21 | 0 | 9.1 Mercados | 1h | 2018-07-20 00:00 | 2018-07-20 00:00 | 20 |
| 22 | 0 | 9.2 Cementerio | 1h | 2018-07-20 00:00 | 2018-07-20 00:00 | 21 |
| 23 | 0 | 9.3 Camal | 1h | 2018-07-20 00:00 | 2018-07-20 00:00 | 22 |
| 24 | 0 | 10 Registro de la Propiedad y Mercantil | 2h | 2018-07-20 00:00 | 2018-07-23 00:00 | 23 |
| 25 | 0 | 11 Administración de bomberos | 1h | 2018-07-23 00:00 | 2018-07-23 00:00 | 24 |
| 26 | 0 | 12 CRM para ciudadanos. Ventanilla Única | 2h | 2018-07-23 00:00 | 2018-07-23 00:00 | 25 |
| 27 | 0 | 15.1 BI Desarrollo Territorial | 2h | 2018-07-23 00:00 | 2018-07-23 00:00 | 26 |
| 28 | 0 | 15.5 BI Obras Públicas Municipales | 2h | 2018-07-23 00:00 | 2018-07-24 00:00 | 27 |
| 29 | 0 | 15.7 BI Registro de la Propiedad y Mercantil | 2h | 2018-07-24 00:00 | 2018-07-24 00:00 | 28 |
| 30 | 0 | 16.1 Consultas Portal Web | 2h | 2018-07-24 00:00 | 2018-07-24 00:00 | 29 |
| 31 | 0 | 16.2 Aplicación para móviles (APP) | 2h | 2018-07-24 00:00 | 2018-07-24 00:00 | 30 |
| 32 | 0 | Entrega de Software | 2h | 2018-07-24 00:00 | 2018-07-25 00:00 | 15 |
| 33 | 0 | Revisar la ETAPA del Proyecto | 1d | 2018-07-25 00:00 | 2018-07-25 00:00 | 14 |
| 34 | 0 | HITO: FINALIZACION ETAPA 1 | 0d | 2018-07-25 00:00 | 2018-07-25 00:00 | 33 |
| 35 | 0 | ETAPA 2: Levantamiento de Características Institucionales - Módulos SC y AC | 14.71d | 2018-07-25 00:00 | 2018-08-13 00:00 | 4 |
| 36 | 0 | Actividades de Gestión del Proyecto | 1.14d | 2018-07-25 00:00 | 2018-07-26 00:00 |  |
| 37 | 0 | Revisión del Plan del Proyecto | 4h | 2018-07-25 00:00 | 2018-07-26 00:00 | 33 |
| 38 | 0 | Programar talleres de requerimientos de Entidad | 4h | 2018-07-26 00:00 | 2018-07-26 00:00 | 37 |
| 39 | 0 | Sesiones de Requerimientos del Entidad | 12d | 2018-07-26 00:00 | 2018-08-10 00:00 |  |
| 40 | 0 | Conducir Sesiones de Requerimientos | 10d | 2018-07-26 00:00 | 2018-08-08 00:00 | 38 |
| 41 | 0 | Crear Documento de Características del Entidad | 2d | 2018-08-08 00:00 | 2018-08-10 00:00 | 40 |
| 42 | 0 | Revisar el Documento de Características del Entidad | 0.57d | 2018-08-10 00:00 | 2018-08-10 00:00 |  |
| 43 | 0 | Revisar el Documento de Características del Entidad | 2h | 2018-08-10 00:00 | 2018-08-10 00:00 | 41 |
| 44 | 0 | Revisar el Plan del Proyecto | 2h | 2018-08-10 00:00 | 2018-08-10 00:00 | 43 |
| 45 | 0 | Revisar la ETAPA del Proyecto | 1d | 2018-08-10 00:00 | 2018-08-13 00:00 | 42 |
| 46 | 0 | HITO: FINALIZACION ETAPA 2 | 0d | 2018-08-13 00:00 | 2018-08-13 00:00 | 45 |
| 47 | 0 | ETAPA 3: Migración de Datos, Configuración y Pruebas de Operación - Módulos SC y AC | 56.57d | 2018-08-13 00:00 | 2018-10-22 00:00 | 35 |
| 48 | 0 | Gestión General del Proyecto | 0.57d | 2018-08-13 00:00 | 2018-08-14 00:00 |  |
| 49 | 0 | Planificar cambio Organizacional | 2h | 2018-08-13 00:00 | 2018-08-14 00:00 | 45 |
| 50 | 0 | Planificar Entrenamiento a Usuarios Finales | 2h | 2018-08-14 00:00 | 2018-08-14 00:00 | 49 |
| 51 | 0 | Definir y Preparar la Migración de Datos | 2h | 2018-08-14 00:00 | 2018-08-14 00:00 | 49 |
| 52 | 0 | Configuración del Sistema en Producción | 56d | 2018-08-14 00:00 | 2018-10-22 00:00 |  |
| 53 | 0 | Instalar el SIIM en Producción | 1d | 2018-08-14 00:00 | 2018-08-15 00:00 | 51 |
| 54 | 0 | Configurar Inicialización del Sistema | 1d | 2018-08-15 00:00 | 2018-08-16 00:00 | 53 |
| 55 | 0 | Realizar la Migración de Datos | 54d | 2018-08-16 00:00 | 2018-10-22 00:00 | 54 |
| 56 | 0 | Desarrollar Adaptaciones al Software | 10d | 2018-08-16 00:00 | 2018-08-28 00:00 | 54 |
| 57 | 0 | Configuración del Sistema en base al Documento de Características del Entidad | 3d | 2018-08-28 00:00 | 2018-08-31 00:00 | 56 |
| 58 | 0 | Configurar Interfaces | 1d | 2018-08-31 00:00 | 2018-09-03 00:00 | 57 |
| 59 | 0 | Configurar Usuarios y Autorizaciones | 1d | 2018-09-03 00:00 | 2018-09-04 00:00 | 58 |
| 60 | 0 | Gestión del Cambio Organizacional | 1d | 2018-09-04 00:00 | 2018-09-05 00:00 |  |
| 61 | 0 | Conducir la comunicación de la Gestión de Cambios (si es aplicable) | 1d | 2018-09-04 00:00 | 2018-09-05 00:00 | 59 |
| 62 | 0 | Pruebas de validación/aceptación del Sistema | 3.43d | 2018-09-05 00:00 | 2018-09-10 00:00 |  |
| 63 | 0 | Mantener la Lista Maestra de Procesos de Entidad | 2h | 2018-09-05 00:00 | 2018-09-05 00:00 | 61 |
| 64 | 0 | Conducir Talleres de Validación | 3.14d | 2018-09-05 00:00 | 2018-09-10 00:00 | 63 |
| 65 | 0 | 1 Dirección de Desarrollo Territorial (No incluye Catastro) | 2h | 2018-09-05 00:00 | 2018-09-05 00:00 |  |
| 66 | 0 | 4 Dirección de Justicia y Vigilancia | 2h | 2018-09-05 00:00 | 2018-09-05 00:00 | 65 |
| 67 | 0 | 5 Dirección de Desarrollo Humano y Social | 1h | 2018-09-05 00:00 | 2018-09-05 00:00 | 66 |
| 68 | 0 | 8.3 Rentas | 2h | 2018-09-05 00:00 | 2018-09-06 00:00 | 67 |
| 69 | 0 | 8.4 Tesorería | 2h | 2018-09-06 00:00 | 2018-09-06 00:00 | 68 |
| 70 | 0 | 9.1 Mercados | 1h | 2018-09-06 00:00 | 2018-09-06 00:00 | 69 |

| ID | WBS | Task | Duration | Start | Finish | Predecessors |
| --- | --- | --- | --- | --- | --- | --- |
| 71 | 0 | 9.2 Cementerio | 1h | 2018-09-06 00:00 | 2018-09-06 00:00 | 70 |
| 72 | 0 | 9.3 Camal | 1h | 2018-09-06 00:00 | 2018-09-06 00:00 | 71 |
| 73 | 0 | 10 Registro de la Propiedad y Mercantil | 2h | 2018-09-06 00:00 | 2018-09-07 00:00 | 72 |
| 74 | 0 | 11 Administración de bomberos | 1h | 2018-09-07 00:00 | 2018-09-07 00:00 | 73 |
| 75 | 0 | 12 CRM para ciudadanos. Ventanilla Única | 2h | 2018-09-07 00:00 | 2018-09-07 00:00 | 74 |
| 76 | 0 | 15.1 BI Desarrollo Territorial | 1h | 2018-09-07 00:00 | 2018-09-07 00:00 | 75 |
| 77 | 0 | 15.5 BI Obras Públicas Municipales | 1h | 2018-09-07 00:00 | 2018-09-07 00:00 | 76 |
| 78 | 0 | 15.7 BI Registro de la Propiedad y Mercantil | 1h | 2018-09-07 00:00 | 2018-09-07 00:00 | 77 |
| 79 | 0 | 16.1 Consultas Portal Web | 1h | 2018-09-07 00:00 | 2018-09-07 00:00 | 78 |
| 80 | 0 | 16.2 Aplicación para móviles (APP) | 1h | 2018-09-07 00:00 | 2018-09-10 00:00 | 79 |
| 81 | 0 | Pruebas de Aceptacion Sistema | 5.43d | 2018-09-10 00:00 | 2018-09-14 00:00 |  |
| 82 | 0 | Definir casos de prueba y alcance | 2h | 2018-09-10 00:00 | 2018-09-10 00:00 | 80, 31 |
| 83 | 0 | Preparar ambiente de pruebas | 1d | 2018-09-10 00:00 | 2018-09-11 00:00 | 82 |
| 84 | 0 | Ejecutar el plan de pruebas de Aceptacion del Sistema | 3.14d | 2018-09-11 00:00 | 2018-09-13 00:00 | 83 |
| 85 | 0 | 1 Dirección de Desarrollo Territorial (No incluye Catastro) | 2h | 2018-09-11 00:00 | 2018-09-11 00:00 |  |
| 86 | 0 | 4 Dirección de Justicia y Vigilancia | 2h | 2018-09-11 00:00 | 2018-09-11 00:00 | 85 |
| 87 | 0 | 5 Dirección de Desarrollo Humano y Social | 1h | 2018-09-11 00:00 | 2018-09-11 00:00 | 86 |
| 88 | 0 | 8.3 Rentas | 2h | 2018-09-11 00:00 | 2018-09-12 00:00 | 87 |
| 89 | 0 | 8.4 Tesorería | 2h | 2018-09-12 00:00 | 2018-09-12 00:00 | 88 |
| 90 | 0 | 9.1 Mercados | 1h | 2018-09-12 00:00 | 2018-09-12 00:00 | 89 |
| 91 | 0 | 9.2 Cementerio | 1h | 2018-09-12 00:00 | 2018-09-12 00:00 | 90 |
| 92 | 0 | 9.3 Camal | 1h | 2018-09-12 00:00 | 2018-09-12 00:00 | 91 |
| 93 | 0 | 10 Registro de la Propiedad y Mercantil | 2h | 2018-09-12 00:00 | 2018-09-12 00:00 | 92 |
| 94 | 0 | 11 Administración de bomberos | 1h | 2018-09-12 00:00 | 2018-09-13 00:00 | 93 |
| 95 | 0 | 12 CRM para ciudadanos. Ventanilla Única | 2h | 2018-09-13 00:00 | 2018-09-13 00:00 | 94 |
| 96 | 0 | 15.1 BI Desarrollo Territorial | 1h | 2018-09-13 00:00 | 2018-09-13 00:00 | 95 |
| 97 | 0 | 15.5 BI Obras Públicas Municipales | 1h | 2018-09-13 00:00 | 2018-09-13 00:00 | 96 |
| 98 | 0 | 15.7 BI Registro de la Propiedad y Mercantil | 1h | 2018-09-13 00:00 | 2018-09-13 00:00 | 97 |
| 99 | 0 | 16.1 Consultas Portal Web | 1h | 2018-09-13 00:00 | 2018-09-13 00:00 | 98 |
| 100 | 0 | 16.2 Aplicación para móviles (APP) | 1h | 2018-09-13 00:00 | 2018-09-13 00:00 | 99 |
| 101 | 0 | Revisar los resultados de las pruebas y necesidades de cambios | 1d | 2018-09-13 00:00 | 2018-09-14 00:00 | 100, 80, 31 |
| 102 | 0 | Planificar Salida a Producción y Soporte | 0.29d | 2018-09-14 00:00 | 2018-09-17 00:00 |  |
| 103 | 0 | Definir Plan de Salida a Producción | 2h | 2018-09-14 00:00 | 2018-09-17 00:00 | 101 |
| 104 | 0 | Planificar Estrategia de Soporte | 2h | 2018-09-14 00:00 | 2018-09-17 00:00 | 101 |
| 105 | 0 | Planificar Administración del Sistema | 2h | 2018-09-14 00:00 | 2018-09-17 00:00 | 101 |
| 106 | 0 | Revisar la ETAPA del Proyecto | 1d | 2018-09-17 00:00 | 2018-09-17 00:00 | 102 |
| 107 | 0 | HITO: FINALIZACION ETAPA 3 | 0d | 2018-09-17 00:00 | 2018-09-17 00:00 | 106 |
| 108 | 0 | ETAPA 4: Preparación Final previo Despliegue en Producción - Módulos SC y AC | 19.86d | 2018-09-17 00:00 | 2018-10-11 00:00 |  |
| 109 | 0 | Gestión General del Proyecto | 0.57d | 2018-09-17 00:00 | 2018-09-18 00:00 |  |
| 110 | 0 | Confirmar el Plan de Entrenamiento | 2h | 2018-09-17 00:00 | 2018-09-18 00:00 | 106 |
| 111 | 0 | Finalizar plan de Salida a Producción | 2h | 2018-09-18 00:00 | 2018-09-18 00:00 | 110 |
| 112 | 0 | Entrenamiento en Modulos de Areas Funcionales Fase 1 | 16d | 2018-09-18 00:00 | 2018-10-08 00:00 | 109 |
| 113 | 0 | Entrenamiento de Usuarios Funcionales y Certificación de Procesos | 12d | 2018-09-18 00:00 | 2018-10-02 00:00 | 111 |
| 114 | 0 | 1 Dirección de Desarrollo Territorial (No incluye Catastro) | 1d | 2018-09-18 00:00 | 2018-09-19 00:00 |  |
| 115 | 0 | 4 Dirección de Justicia y Vigilancia | 1d | 2018-09-19 00:00 | 2018-09-20 00:00 | 114 |
| 116 | 0 | 5 Dirección de Desarrollo Humano y Social | 1d | 2018-09-20 00:00 | 2018-09-21 00:00 | 115 |
| 117 | 0 | 8.3 Rentas | 1d | 2018-09-21 00:00 | 2018-09-21 00:00 | 116 |
| 118 | 0 | 8.4 Tesorería | 1d | 2018-09-21 00:00 | 2018-09-24 00:00 | 117 |
| 119 | 0 | 9.1 Mercados | 0.5d | 2018-09-24 00:00 | 2018-09-25 00:00 | 118 |
| 120 | 0 | 9.2 Cementerio | 0.5d | 2018-09-25 00:00 | 2018-09-25 00:00 | 119 |
| 121 | 0 | 9.3 Camal | 0.5d | 2018-09-25 00:00 | 2018-09-26 00:00 | 120 |
| 122 | 0 | 10 Registro de la Propiedad y Mercantil | 1d | 2018-09-26 00:00 | 2018-09-26 00:00 | 121 |
| 123 | 0 | 11 Administración de bomberos | 0.5d | 2018-09-27 00:00 | 2018-09-27 00:00 | 122 |
| 124 | 0 | 12 CRM para ciudadanos. Ventanilla Única | 1d | 2018-09-27 00:00 | 2018-09-28 00:00 | 123 |
| 125 | 0 | 15.1 BI Desarrollo Territorial | 0.5d | 2018-09-28 00:00 | 2018-09-28 00:00 | 124 |
| 126 | 0 | 15.5 BI Obras Públicas Municipales | 0.5d | 2018-09-28 00:00 | 2018-10-01 00:00 | 125 |
| 127 | 0 | 15.7 BI Registro de la Propiedad y Mercantil | 0.5d | 2018-10-01 00:00 | 2018-10-01 00:00 | 126 |
| 128 | 0 | 16.1 Consultas Portal Web | 1d | 2018-10-01 00:00 | 2018-10-02 00:00 | 127 |
| 129 | 0 | 16.2 Aplicación para móviles (APP) | 0.5d | 2018-10-02 00:00 | 2018-10-02 00:00 | 128 |
| 130 | 0 | Entrenamiento de Usuario Técnicos | 4d | 2018-10-02 00:00 | 2018-10-08 00:00 | 129, 100, 80, 31 |
| 131 | 0 | Preparación del Sistema | 0.86d | 2018-10-08 00:00 | 2018-10-09 00:00 | 112 |
| 132 | 0 | Completar la Administración del Sistema | 3h | 2018-10-08 00:00 | 2018-10-08 00:00 |  |
| 133 | 0 | Comprobación de la Puesta a Producción | 3h | 2018-10-08 00:00 | 2018-10-09 00:00 | 132 |
| 134 | 0 | Transición | 2.14d | 2018-10-09 00:00 | 2018-10-11 00:00 | 131 |
| 135 | 0 | Finalizar Procesamiento de Sistemas Legados | 1h | 2018-10-09 00:00 | 2018-10-09 00:00 |  |
| 136 | 0 | Realizar la Salida a Producción - Carga Inicial y Configuración Inicial | 2d | 2018-10-09 00:00 | 2018-10-11 00:00 | 135 |
| 137 | 0 | Revisar la ETAPA del Proyecto | 2h | 2018-10-11 00:00 | 2018-10-11 00:00 | 134 |
| 138 | 0 | HITO: FINALIZACION ETAPA 4 | 0d | 2018-10-11 00:00 | 2018-10-11 00:00 | 137 |
| 139 | 0 | ETAPA 5: Despliegue en Producción y Soporte Técnico - Módulos SC y AC | 30d | 2018-10-11 00:00 | 2018-11-16 00:00 | 108 |
| 140 | 0 | Soporte en Producción | 30d | 2018-10-11 00:00 | 2018-11-16 00:00 |  |

| ID | WBS | Task | Duration | Start | Finish | Predecessors |
| --- | --- | --- | --- | --- | --- | --- |
| 141 | 0 | Soporte durante la Salida a Producción | 30d | 2018-10-11 00:00 | 2018-11-16 00:00 | 137 |
| 142 | 0 | Resolver incidentes críticos | 20d | 2018-10-11 00:00 | 2018-11-05 00:00 | 137 |
| 143 | 0 | Entregar el soporte y Administración al cliente | 1d | 2018-10-11 00:00 | 2018-10-12 00:00 |  |
| 144 | 0 | Mejora Continua | 10d | 2018-10-11 00:00 | 2018-10-24 00:00 |  |
| 145 | 0 | Monitoreo del Sistema y Acompañamiento ETAPA1 | 10d | 2018-10-11 00:00 | 2018-10-24 00:00 | 137 |
| 146 | 0 | Ajustes y Configuraciones finales al Software acorde a necesidades Entidad | 10d | 2018-10-11 00:00 | 2018-10-24 00:00 | 137 |
| 147 | 0 | Cierre de la ETAPA 5 | 0.29d | 2018-10-24 00:00 | 2018-10-24 00:00 |  |
| 148 | 0 | Reunión de Cierre de la ETAPA 5 | 2h | 2018-10-24 00:00 | 2018-10-24 00:00 | 144 |
| 149 | 0 | HITO: FIN DE LA ETAPA 5 | 0d | 2018-10-24 00:00 | 2018-10-24 00:00 | 148 |
| 150 | 0 | ETAPA 6: Estabilización, Apoyo Emisión 2019 y Desarrollo de funcionalidades no establecidas en el Alcance Contractual | 57.29d | 2018-11-16 00:00 | 2019-01-25 00:00 |  |
| 151 | 0 | Depuración de Errores de Calidad de Información fuente migrada (Base Oracle) | 30d | 2018-11-16 00:00 | 2018-12-24 00:00 | 139 |
| 152 | 0 | Soporte y Mantenimiento de Módulos de la Fase 1 | 30d | 2018-11-16 00:00 | 2018-12-24 00:00 | 139 |
| 153 | 0 | Adaptaciones a Software para incluir Nuevas funcionalidades no contempladas en alcance proyecto | 30d | 2018-11-16 00:00 | 2018-12-24 00:00 | 139 |
| 154 | 0 | Implementación de Licencia temporal de Modulo de Catastro Urbano SIIM | 20d | 2018-12-03 00:00 | 2018-12-26 00:00 |  |
| 155 | 0 | Migración de información de Emisión de Impuestos de Catastro Urbano 2019 | 20d | 2018-12-03 00:00 | 2018-12-26 00:00 |  |
| 156 | 0 | Creación de interfaces mediante ETLs para integración entre Sistema Oracle y SIIM para la recaudación de Impuestos 2019 de Catastro Urbano | 20d | 2018-12-03 00:00 | 2018-12-26 00:00 |  |
| 157 | 0 | Soporte en Recaudación de Impuestos de Catastro urbano y mejoras 2019 | 25d | 2018-12-26 00:00 | 2019-01-25 00:00 | 156 |
| 158 | 0 | Cierre de la FASE 1 | 0.29d | 2019-01-25 00:00 | 2019-01-25 00:00 |  |
| 159 | 0 | Reunión de Cierre de la FASE 1 | 2h | 2019-01-25 00:00 | 2019-01-25 00:00 | 157 |
| 160 | 0 | HITO: FIN DE LA FASE 1 | 0d | 2019-01-25 00:00 | 2019-01-25 00:00 | 159 |
| 161 | 0 | FASE 2: Implementación de Módulos de Planificación de Recursos Institucionales - PRI | 88.29d | 2019-01-25 00:00 | 2019-05-14 00:00 |  |
| 162 | 0 | ETAPA 1: Instalación del SIIM - Módulos PRI | 4.14d | 2019-01-25 00:00 | 2019-01-31 00:00 |  |
| 163 | 0 | Entrega e Instalación del Software | 3.14d | 2019-01-25 00:00 | 2019-01-30 00:00 |  |
| 164 | 0 | Instalar SIIM en Servidor | 2.86d | 2019-01-25 00:00 | 2019-01-30 00:00 |  |
| 165 | 0 | Instalar Módulos PRI | 2.86d | 2019-01-25 00:00 | 2019-01-30 00:00 | 150 |
| 166 | 0 | 2.1 Administración Técnica | 2h | 2019-01-25 00:00 | 2019-01-25 00:00 |  |
| 167 | 0 | 2.2 Salud Ocupacional y Riesgos | 2h | 2019-01-25 00:00 | 2019-01-28 00:00 | 166 |
| 168 | 0 | 3.2 Adquisiciones | 2h | 2019-01-28 00:00 | 2019-01-28 00:00 | 167 |
| 169 | 0 | 6.1 Administración de Bienes | 2h | 2019-01-28 00:00 | 2019-01-28 00:00 | 168 |
| 170 | 0 | 8.1 Contabilidad | 2h | 2019-01-28 00:00 | 2019-01-28 00:00 | 169 |
| 171 | 0 | 8.2 Presupuestos | 2h | 2019-01-28 00:00 | 2019-01-29 00:00 | 170 |
| 172 | 0 | 13 CRM para Urbanizaciones | 2h | 2019-01-29 00:00 | 2019-01-29 00:00 | 171 |
| 173 | 0 | 14 Dirección de Planificación Institucional (Incluye control de proyectos de Obras Públicas | 2h | 2019-01-29 00:00 | 2019-01-29 00:00 | 172 |
| 174 | 0 | 15.6 Servicios Corporativos | 2h | 2019-01-29 00:00 | 2019-01-29 00:00 | 173 |
| 175 | 0 | 15.8 BI Planificación Institucional | 2h | 2019-01-29 00:00 | 2019-01-30 00:00 | 174 |
| 176 | 0 | Entrega de Software | 2h | 2019-01-30 00:00 | 2019-01-30 00:00 | 164 |
| 177 | 0 | Revisar la ETAPA del Proyecto | 1d | 2019-01-30 00:00 | 2019-01-31 00:00 | 163 |
| 178 | 0 | HITO: FINALIZACION ETAPA 1 | 0d | 2019-01-31 00:00 | 2019-01-31 00:00 | 177 |
| 179 | 0 | ETAPA 2: Levantamiento de Características Institucionales - Módulos PRI | 8.57d | 2019-01-31 00:00 | 2019-02-11 00:00 | 162 |
| 180 | 0 | Actividades de Gestión del Proyecto | 0.57d | 2019-01-31 00:00 | 2019-01-31 00:00 |  |
| 181 | 0 | Revisión del Plan del Proyecto | 2h | 2019-01-31 00:00 | 2019-01-31 00:00 |  |
| 182 | 0 | Programar talleres de requerimientos de Entidad | 2h | 2019-01-31 00:00 | 2019-01-31 00:00 | 181 |
| 183 | 0 | Sesiones de Requerimientos del Entidad | 6d | 2019-01-31 00:00 | 2019-02-08 00:00 | 180 |
| 184 | 0 | Conducir Sesiones de Requerimientos | 5d | 2019-01-31 00:00 | 2019-02-07 00:00 |  |
| 185 | 0 | Crear Documento de Características del Entidad | 1d | 2019-02-07 00:00 | 2019-02-08 00:00 | 184 |
| 186 | 0 | Revisar el Documento de Características del Entidad | 1d | 2019-02-08 00:00 | 2019-02-08 00:00 | 183 |
| 187 | 0 | Revisar el Documento de Características del Entidad | 4h | 2019-02-08 00:00 | 2019-02-08 00:00 |  |
| 188 | 0 | Revisar el Plan del Proyecto | 3h | 2019-02-08 00:00 | 2019-02-08 00:00 | 187 |
| 189 | 0 | Revisar la ETAPA del Proyecto | 1d | 2019-02-08 00:00 | 2019-02-11 00:00 | 186 |
| 190 | 0 | HITO: FINALIZACION ETAPA 2 | 0d | 2019-02-11 00:00 | 2019-02-11 00:00 | 189 |
| 191 | 0 | ETAPA 3: Migración de Datos, Configuración y Pruebas de Operación de Módulos - Módulos PRI | 33.71d | 2019-02-11 00:00 | 2019-03-25 00:00 | 179 |
| 192 | 0 | Gestión General del Proyecto | 1.57d | 2019-02-11 00:00 | 2019-02-13 00:00 |  |
| 193 | 0 | Planificar cambio Organizacional | 3h | 2019-02-11 00:00 | 2019-02-12 00:00 |  |
| 194 | 0 | Planificar Entrenamiento a Usuarios Finales | 4h | 2019-02-12 00:00 | 2019-02-12 00:00 | 193 |
| 195 | 0 | Definir y Preparar la Migración de Datos | 4h | 2019-02-12 00:00 | 2019-02-13 00:00 | 194 |
| 196 | 0 | Configuración del Sistema en Producción | 19.57d | 2019-02-13 00:00 | 2019-03-08 00:00 | 192 |
| 197 | 0 | Instalar el SIIM en Producción | 4h | 2019-02-13 00:00 | 2019-02-13 00:00 |  |
| 198 | 0 | Configurar Inicialización del Sistema | 1d | 2019-02-13 00:00 | 2019-02-14 00:00 | 197 |
| 199 | 0 | Realizar la Migración de Datos | 13d | 2019-02-14 00:00 | 2019-03-01 00:00 | 198 |
| 200 | 0 | Desarrollar Adaptaciones al Software | 2d | 2019-03-01 00:00 | 2019-03-05 00:00 | 199 |
| 201 | 0 | Configuración del Sistema en base al Documento de Características del Entidad | 1d | 2019-03-05 00:00 | 2019-03-06 00:00 | 200 |
| 202 | 0 | Configurar Interfaces | 1d | 2019-03-06 00:00 | 2019-03-07 00:00 | 201 |
| 203 | 0 | Configurar Usuarios y Autorizaciones | 1d | 2019-03-07 00:00 | 2019-03-08 00:00 | 202 |
| 204 | 0 | Gestión del Cambio Organizacional | 0.29d | 2019-03-08 00:00 | 2019-03-08 00:00 | 196 |
| 205 | 0 | Conducir la comunicación de la Gestión de Cambios (si es aplicable) | 2h | 2019-03-08 00:00 | 2019-03-08 00:00 |  |
| 206 | 0 | Pruebas de validación del Sistema | 4.57d | 2019-03-08 00:00 | 2019-03-14 00:00 | 204 |
| 207 | 0 | Mantener la Lista Maestra de Procesos de Entidad | 4h | 2019-03-08 00:00 | 2019-03-11 00:00 |  |
| 208 | 0 | Conducir Talleres de Validación | 4d | 2019-03-11 00:00 | 2019-03-14 00:00 | 207 |
| 209 | 0 | 2.1 Administración Técnica | 4h | 2019-03-11 00:00 | 2019-03-11 00:00 |  |
| 210 | 0 | 2.2 Salud Ocupacional y Riesgos | 2h | 2019-03-11 00:00 | 2019-03-11 00:00 | 209 |

| ID | WBS | Task | Duration | Start | Finish | Predecessors |
| --- | --- | --- | --- | --- | --- | --- |
| 211 | 0 | 3.2 Adquisiciones | 4h | 2019-03-11 00:00 | 2019-03-12 00:00 | 210 |
| 212 | 0 | 6.1 Administración de Bienes | 2h | 2019-03-12 00:00 | 2019-03-12 00:00 | 211 |
| 213 | 0 | 8.1 Contabilidad | 4h | 2019-03-12 00:00 | 2019-03-13 00:00 | 212 |
| 214 | 0 | 8.2 Presupuestos | 4h | 2019-03-13 00:00 | 2019-03-13 00:00 | 213 |
| 215 | 0 | 13 CRM para Urbanizaciones | 2h | 2019-03-13 00:00 | 2019-03-13 00:00 | 214 |
| 216 | 0 | 14 Dirección de Planificación Institucional (Incluye control de proyectos de Obras Públicas) | 2h | 2019-03-13 00:00 | 2019-03-14 00:00 | 215 |
| 217 | 0 | 15.6 BI Servicios Corporativos | 2h | 2019-03-14 00:00 | 2019-03-14 00:00 | 216 |
| 218 | 0 | 15.8 BI Planificación Institucional | 2h | 2019-03-14 00:00 | 2019-03-14 00:00 | 217 |
| 219 | 0 | Pruebas de aceptacion del Sistema | 5.43d | 2019-03-14 00:00 | 2019-03-21 00:00 | 206 |
| 220 | 0 | Definir casos de prueba y alcance | 3h | 2019-03-14 00:00 | 2019-03-14 00:00 |  |
| 221 | 0 | Preparar ambiente de pruebas | 1d | 2019-03-14 00:00 | 2019-03-15 00:00 | 220 |
| 222 | 0 | Ejecutar el plan de pruebas | 4d | 2019-03-15 00:00 | 2019-03-21 00:00 | 221 |
| 223 | 0 | 2.1 Administración Técnica | 4h | 2019-03-15 00:00 | 2019-03-18 00:00 |  |
| 224 | 0 | 2.2 Salud Ocupacional y Riesgos | 2h | 2019-03-18 00:00 | 2019-03-18 00:00 | 223 |
| 225 | 0 | 3.2 Adquisiciones | 4h | 2019-03-18 00:00 | 2019-03-19 00:00 | 224 |
| 226 | 0 | 6.1 Administración de Bienes | 2h | 2019-03-19 00:00 | 2019-03-19 00:00 | 225 |
| 227 | 0 | 8.1 Contabilidad | 4h | 2019-03-19 00:00 | 2019-03-19 00:00 | 226 |
| 228 | 0 | 8.2 Presupuestos | 4h | 2019-03-19 00:00 | 2019-03-20 00:00 | 227 |
| 229 | 0 | 13 CRM para Urbanizaciones | 2h | 2019-03-20 00:00 | 2019-03-20 00:00 | 228 |
| 230 | 0 | 14 Dirección de Planificación Institucional (Incluye control de proyectos de Obras Públicas) | 2h | 2019-03-20 00:00 | 2019-03-20 00:00 | 229 |
| 231 | 0 | 15.6 BI Servicios Corporativos | 2h | 2019-03-20 00:00 | 2019-03-21 00:00 | 230 |
| 232 | 0 | 15.8 BI Planificación Institucional | 2h | 2019-03-21 00:00 | 2019-03-21 00:00 | 231 |
| 233 | 0 | Revisar los resultados de las pruebas y necesidades de cambios | 1d | 2019-03-14 00:00 | 2019-03-15 00:00 |  |
| 234 | 0 | Planificar Salida a Producción y Soporte | 1.29d | 2019-03-21 00:00 | 2019-03-22 00:00 | 219 |
| 235 | 0 | Definir Plan de Salida a Producción | 3h | 2019-03-21 00:00 | 2019-03-21 00:00 |  |
| 236 | 0 | Planificar Estrategia de Soporte | 3h | 2019-03-21 00:00 | 2019-03-22 00:00 | 235 |
| 237 | 0 | Planificar Administración del Sistema | 3h | 2019-03-22 00:00 | 2019-03-22 00:00 | 236 |
| 238 | 0 | Revisar la ETAPA del Proyecto | 1d | 2019-03-22 00:00 | 2019-03-25 00:00 | 234 |
| 239 | 0 | HITO: FINALIZACION ETAPA 3 | 0d | 2019-03-25 00:00 | 2019-03-25 00:00 | 238 |
| 240 | 0 | ETAPA 4: Preparación Final previo Despliegue en Producción - Módulos PRI | 11.43d | 2019-03-25 00:00 | 2019-04-08 00:00 | 191 |
| 241 | 0 | Gestión General del Proyecto | 1.14d | 2019-03-25 00:00 | 2019-03-26 00:00 |  |
| 242 | 0 | Confirmar el Plan de Entrenamiento | 4h | 2019-03-25 00:00 | 2019-03-25 00:00 |  |
| 243 | 0 | Finalizar plan de Salida a Producción | 4h | 2019-03-25 00:00 | 2019-03-26 00:00 | 242 |
| 244 | 0 | Entrenamiento | 6d | 2019-03-26 00:00 | 2019-04-02 00:00 | 241 |
| 245 | 0 | Entrenamiento de Usuarios Funcionales y Certificación de Procesos | 4d | 2019-03-26 00:00 | 2019-03-29 00:00 |  |
| 246 | 0 | 2.1 Administración Técnica | 4h | 2019-03-26 00:00 | 2019-03-26 00:00 |  |
| 247 | 0 | 2.2 Salud Ocupacional y Riesgos | 2h | 2019-03-26 00:00 | 2019-03-27 00:00 | 246 |
| 248 | 0 | 3.2 Adquisiciones | 4h | 2019-03-27 00:00 | 2019-03-27 00:00 | 247 |
| 249 | 0 | 6.1 Administración de Bienes | 2h | 2019-03-27 00:00 | 2019-03-27 00:00 | 248 |
| 250 | 0 | 8.1 Contabilidad | 4h | 2019-03-27 00:00 | 2019-03-28 00:00 | 249 |
| 251 | 0 | 8.2 Presupuestos | 4h | 2019-03-28 00:00 | 2019-03-28 00:00 | 250 |
| 252 | 0 | 13 CRM para Urbanizaciones | 2h | 2019-03-28 00:00 | 2019-03-29 00:00 | 251 |
| 253 | 0 | 14 Dirección de Planificación Institucional (Incluye control de proyectos de Obras Públicas) | 2h | 2019-03-29 00:00 | 2019-03-29 00:00 | 252 |
| 254 | 0 | 15.6 BI Servicios Corporativos | 2h | 2019-03-29 00:00 | 2019-03-29 00:00 | 253 |
| 255 | 0 | 15.8 BI Planificación Institucional | 2h | 2019-03-29 00:00 | 2019-03-29 00:00 | 254 |
| 256 | 0 | Entrenamiento de Usuario Técnicos | 6d | 2019-03-26 00:00 | 2019-04-02 00:00 |  |
| 257 | 0 | Preparación del Sistema | 1.43d | 2019-04-02 00:00 | 2019-04-03 00:00 | 244 |
| 258 | 0 | Completar la Administración del Sistema | 5h | 2019-04-02 00:00 | 2019-04-03 00:00 |  |
| 259 | 0 | Comprobación de la Puesta a Producción | 5h | 2019-04-03 00:00 | 2019-04-03 00:00 | 258 |
| 260 | 0 | Transición | 2.57d | 2019-04-03 00:00 | 2019-04-08 00:00 | 257 |
| 261 | 0 | Finalizar Procesamiento de Sistemas Legados | 4h | 2019-04-03 00:00 | 2019-04-04 00:00 |  |
| 262 | 0 | Realizar la Salida a Producción - Carga Inicial y Configuración Inicial | 2d | 2019-04-04 00:00 | 2019-04-08 00:00 | 261 |
| 263 | 0 | Revisar la ETAPA del Proyecto | 2h | 2019-04-08 00:00 | 2019-04-08 00:00 | 260 |
| 264 | 0 | HITO: FINALIZACION ETAPA 4 | 0d | 2019-04-08 00:00 | 2019-04-08 00:00 | 263 |
| 265 | 0 | ETAPA 5: Despliegue en Producción y Soporte Técnico - Módulos PRI | 30.43d | 2019-04-08 00:00 | 2019-05-14 00:00 | 240 |
| 266 | 0 | Soporte en Producción | 15d | 2019-04-08 00:00 | 2019-04-25 00:00 |  |
| 267 | 0 | Soporte durante la Salida a Producción | 15d | 2019-04-08 00:00 | 2019-04-25 00:00 |  |
| 268 | 0 | Resolver incidentes críticos | 15d | 2019-04-08 00:00 | 2019-04-25 00:00 | 263 |
| 269 | 0 | Entregar el soporte y Administración al cliente | 2d | 2019-04-08 00:00 | 2019-04-10 00:00 | 263 |
| 270 | 0 | Mejora Continua | 15d | 2019-04-25 00:00 | 2019-05-14 00:00 | 266 |
| 271 | 0 | Monitoreo del Sistema y Acompañamiento ETAPA2 | 15d | 2019-04-25 00:00 | 2019-05-14 00:00 | 263 |
| 272 | 0 | Ajustes y Configuraciones finales al Software acorde a necesidades Entidad | 15d | 2019-04-25 00:00 | 2019-05-14 00:00 | 263 |
| 273 | 0 | Cierre de la FASE 2 | 0.43d | 2019-05-14 00:00 | 2019-05-14 00:00 | 270 |
| 274 | 0 | Reunión de Cierre de la FASE 2 | 3h | 2019-05-14 00:00 | 2019-05-14 00:00 |  |
| 275 | 0 | HITO: FIN DE LA FASE 2 | 0d | 2019-05-14 00:00 | 2019-05-14 00:00 | 273 |
| 276 | 0 | FASE 3: Implementación de Módulos de Planificación de Recursos Institucionales - PRI | 76.86d | 2019-04-08 00:00 | 2019-07-10 00:00 |  |
| 277 | 0 | ETAPA 1: Instalación del SIIM - Módulos PRI | 4.29d | 2019-04-08 00:00 | 2019-04-12 00:00 |  |
| 278 | 0 | Entrega e Instalación del Software | 3.29d | 2019-04-08 00:00 | 2019-04-11 00:00 |  |
| 279 | 0 | Instalar SIIM en Servidor | 3d | 2019-04-08 00:00 | 2019-04-10 00:00 |  |
| 280 | 0 | Instalar Módulos PRI | 3d | 2019-04-08 00:00 | 2019-04-10 00:00 | 264 |

| ID | WBS | Task | Duration | Start | Finish | Predecessors |
| --- | --- | --- | --- | --- | --- | --- |
| 281 | 0 | Entrega de Software | 2h | 2019-04-10 00:00 | 2019-04-11 00:00 | 279 |
| 282 | 0 | Revisar la ETAPA del Proyecto | 1d | 2019-04-11 00:00 | 2019-04-12 00:00 | 278 |
| 283 | 0 | HITO: FINALIZACION ETAPA 1 | 0d | 2019-04-12 00:00 | 2019-04-12 00:00 | 282 |
| 284 | 0 | ETAPA 2: Levantamiento de Características Institucionales - Módulos PRI | 8.57d | 2019-04-12 00:00 | 2019-04-23 00:00 | 277 |
| 285 | 0 | Actividades de Gestión del Proyecto | 0.57d | 2019-04-12 00:00 | 2019-04-12 00:00 |  |
| 286 | 0 | Revisión del Plan del Proyecto | 2h | 2019-04-12 00:00 | 2019-04-12 00:00 |  |
| 287 | 0 | Programar talleres de requerimientos de Entidad | 2h | 2019-04-12 00:00 | 2019-04-12 00:00 | 286 |
| 288 | 0 | Sesiones de Requerimientos del Entidad | 6d | 2019-04-12 00:00 | 2019-04-19 00:00 | 285 |
| 289 | 0 | Conducir Sesiones de Requerimientos | 3d | 2019-04-12 00:00 | 2019-04-17 00:00 |  |
| 290 | 0 | Crear Documento de Características del Entidad | 3d | 2019-04-17 00:00 | 2019-04-19 00:00 | 289 |
| 291 | 0 | Revisar el Documento de Características del Entidad | 1d | 2019-04-19 00:00 | 2019-04-22 00:00 | 288 |
| 292 | 0 | Revisar el Documento de Características del Entidad | 4h | 2019-04-19 00:00 | 2019-04-22 00:00 |  |
| 293 | 0 | Revisar el Plan del Proyecto | 3h | 2019-04-22 00:00 | 2019-04-22 00:00 | 292 |
| 294 | 0 | Revisar la ETAPA del Proyecto | 1d | 2019-04-22 00:00 | 2019-04-23 00:00 | 291 |
| 295 | 0 | HITO: FINALIZACION ETAPA 2 | 0d | 2019-04-23 00:00 | 2019-04-23 00:00 | 294 |
| 296 | 0 | ETAPA 3: Migración de Datos, Configuración y Pruebas de Operación de Módulos - Módulos PRI | 33.43d | 2019-04-23 00:00 | 2019-06-03 00:00 | 284 |
| 297 | 0 | Gestión General del Proyecto | 1.57d | 2019-04-23 00:00 | 2019-04-24 00:00 |  |
| 298 | 0 | Planificar cambio Organizacional | 3h | 2019-04-23 00:00 | 2019-04-23 00:00 |  |
| 299 | 0 | Planificar Entrenamiento a Usuarios Finales | 4h | 2019-04-23 00:00 | 2019-04-24 00:00 | 298 |
| 300 | 0 | Definir y Preparar la Migración de Datos | 4h | 2019-04-24 00:00 | 2019-04-24 00:00 | 299 |
| 301 | 0 | Configuración del Sistema en Producción | 20.57d | 2019-04-24 00:00 | 2019-05-20 00:00 | 297 |
| 302 | 0 | Instalar el SIIM en Producción | 4h | 2019-04-24 00:00 | 2019-04-25 00:00 |  |
| 303 | 0 | Configurar Inicialización del Sistema | 1d | 2019-04-25 00:00 | 2019-04-26 00:00 | 302 |
| 304 | 0 | Realizar la Migración de Datos | 10d | 2019-04-26 00:00 | 2019-05-09 00:00 | 303 |
| 305 | 0 | Desarrollar Adaptaciones al Software | 5d | 2019-05-09 00:00 | 2019-05-15 00:00 | 304 |
| 306 | 0 | Configuración del Sistema en base al Documento de Características del Entidad | 2d | 2019-05-15 00:00 | 2019-05-17 00:00 | 305 |
| 307 | 0 | Configurar Interfaces | 1d | 2019-05-17 00:00 | 2019-05-20 00:00 | 306 |
| 308 | 0 | Configurar Usuarios y Autorizaciones | 1d | 2019-05-20 00:00 | 2019-05-20 00:00 | 307 |
| 309 | 0 | Gestión del Cambio Organizacional | 2d | 2019-05-20 00:00 | 2019-05-22 00:00 | 301 |
| 310 | 0 | Conducir la comunicación de la Gestión de Cambios (si es aplicable) | 2d | 2019-05-20 00:00 | 2019-05-22 00:00 |  |
| 311 | 0 | Pruebas de validación/aceptación del Sistema | 2.57d | 2019-05-22 00:00 | 2019-05-24 00:00 | 309 |
| 312 | 0 | Mantener la Lista Maestra de Procesos de Entidad | 4h | 2019-05-22 00:00 | 2019-05-23 00:00 |  |
| 313 | 0 | Conducir Talleres de Validación | 2d | 2019-05-23 00:00 | 2019-05-24 00:00 | 312 |
| 314 | 0 | 3.1 Compras Públicas | 2h | 2019-05-23 00:00 | 2019-05-23 00:00 |  |
| 315 | 0 | 6.2 Servicios Generales | 2h | 2019-05-23 00:00 | 2019-05-23 00:00 | 314 |
| 316 | 0 | 8.5 Gestión Jurídica - Financiera | 2h | 2019-05-23 00:00 | 2019-05-23 00:00 | 315 |
| 317 | 0 | 15.2 BI Financiero | 2h | 2019-05-23 00:00 | 2019-05-24 00:00 | 316 |
| 318 | 0 | 15.3 BI Administración del Talento Humano | 2h | 2019-05-24 00:00 | 2019-05-24 00:00 | 317 |
| 319 | 0 | 15.4 BI Compras Públicas | 2h | 2019-05-24 00:00 | 2019-05-24 00:00 | 318 |
| 320 | 0 | 15.9 Tablero de Control | 2h | 2019-05-24 00:00 | 2019-05-24 00:00 | 319 |
| 321 | 0 | Pruebas de aceptacion del Sistema | 4.43d | 2019-05-24 00:00 | 2019-05-30 00:00 | 311 |
| 322 | 0 | Definir casos de prueba y alcance | 3h | 2019-05-24 00:00 | 2019-05-27 00:00 |  |
| 323 | 0 | Preparar ambiente de pruebas | 1d | 2019-05-27 00:00 | 2019-05-28 00:00 | 322 |
| 324 | 0 | Ejecutar el plan de pruebas | 2d | 2019-05-28 00:00 | 2019-05-29 00:00 | 323 |
| 325 | 0 | 3.1 Compras Públicas | 2h | 2019-05-28 00:00 | 2019-05-28 00:00 |  |
| 326 | 0 | 6.2 Servicios Generales | 2h | 2019-05-28 00:00 | 2019-05-28 00:00 | 325 |
| 327 | 0 | 8.5 Gestión Jurídica - Financiera | 2h | 2019-05-28 00:00 | 2019-05-28 00:00 | 326 |
| 328 | 0 | 15.2 BI Financiero | 2h | 2019-05-28 00:00 | 2019-05-29 00:00 | 327 |
| 329 | 0 | 15.3 BI Administración del Talento Humano | 2h | 2019-05-29 00:00 | 2019-05-29 00:00 | 328 |
| 330 | 0 | 15.4 BI Compras Públicas | 2h | 2019-05-29 00:00 | 2019-05-29 00:00 | 329 |
| 331 | 0 | 15.9 Tablero de Control | 2h | 2019-05-29 00:00 | 2019-05-29 00:00 | 330 |
| 332 | 0 | Revisar los resultados de las pruebas y necesidades de cambios | 1d | 2019-05-29 00:00 | 2019-05-30 00:00 | 331, 320 |
| 333 | 0 | Planificar Salida a Producción y Soporte | 1.29d | 2019-05-30 00:00 | 2019-05-31 00:00 | 321 |
| 334 | 0 | Definir Plan de Salida a Producción | 3h | 2019-05-30 00:00 | 2019-05-31 00:00 |  |
| 335 | 0 | Planificar Estrategia de Soporte | 3h | 2019-05-31 00:00 | 2019-05-31 00:00 | 334 |
| 336 | 0 | Planificar Administración del Sistema | 3h | 2019-05-31 00:00 | 2019-05-31 00:00 | 335 |
| 337 | 0 | Revisar la ETAPA del Proyecto | 1d | 2019-05-31 00:00 | 2019-06-03 00:00 | 333 |
| 338 | 0 | HITO: FINALIZACION ETAPA 3 | 0d | 2019-06-03 00:00 | 2019-06-03 00:00 | 337 |
| 339 | 0 | ETAPA 4: Preparación Final previo Despliegue en Producción - Módulos PRI | 12.43d | 2019-06-03 00:00 | 2019-06-18 00:00 | 296 |
| 340 | 0 | Gestión General del Proyecto | 1.14d | 2019-06-03 00:00 | 2019-06-04 00:00 |  |
| 341 | 0 | Confirmar el Plan de Entrenamiento | 4h | 2019-06-03 00:00 | 2019-06-04 00:00 |  |
| 342 | 0 | Finalizar plan de Salida a Producción | 4h | 2019-06-04 00:00 | 2019-06-04 00:00 | 341 |
| 343 | 0 | Entrenamiento | 7d | 2019-06-04 00:00 | 2019-06-12 00:00 | 340 |
| 344 | 0 | Entrenamiento de Usuarios Funcionales y Certificación de Procesos | 4d | 2019-06-04 00:00 | 2019-06-10 00:00 |  |
| 345 | 0 | 3.1 Compras Públicas | 4h | 2019-06-04 00:00 | 2019-06-05 00:00 |  |
| 346 | 0 | 6.2 Servicios Generales | 4h | 2019-06-05 00:00 | 2019-06-05 00:00 | 345 |
| 347 | 0 | 8.5 Gestión Jurídica - Financiera | 4h | 2019-06-05 00:00 | 2019-06-06 00:00 | 346 |
| 348 | 0 | 15.2 BI Financiero | 4h | 2019-06-06 00:00 | 2019-06-06 00:00 | 347 |
| 349 | 0 | 15.3 BI Administración del Talento Humano | 4h | 2019-06-06 00:00 | 2019-06-07 00:00 | 348 |
| 350 | 0 | 15.4 BI Compras Públicas | 4h | 2019-06-07 00:00 | 2019-06-07 00:00 | 349 |

| ID | WBS | Task | Duration | Start | Finish | Predecessors |
| --- | --- | --- | --- | --- | --- | --- |
| 351 | 0 | 15.9 Tablero de Control | 4h | 2019-06-07 00:00 | 2019-06-10 00:00 | 350 |
| 352 | 0 | Entrenamiento de Usuario Técnicos | 3d | 2019-06-10 00:00 | 2019-06-12 00:00 | 351 |
| 353 | 0 | Preparación del Sistema | 1.43d | 2019-06-12 00:00 | 2019-06-14 00:00 | 343 |
| 354 | 0 | Completar la Administración del Sistema | 5h | 2019-06-12 00:00 | 2019-06-13 00:00 |  |
| 355 | 0 | Comprobación de la Puesta a Producción | 5h | 2019-06-13 00:00 | 2019-06-14 00:00 | 354 |
| 356 | 0 | Transición | 2.57d | 2019-06-14 00:00 | 2019-06-18 00:00 | 353 |
| 357 | 0 | Finalizar Procesamiento de Sistemas Legados | 4h | 2019-06-14 00:00 | 2019-06-14 00:00 |  |
| 358 | 0 | Realizar la Salida a Producción - Carga Inicial y Configuración Inicial | 2d | 2019-06-14 00:00 | 2019-06-18 00:00 | 357 |
| 359 | 0 | Revisar la ETAPA del Proyecto | 2h | 2019-06-18 00:00 | 2019-06-18 00:00 | 356 |
| 360 | 0 | HITO: FINALIZACION ETAPA 4 | 0d | 2019-06-18 00:00 | 2019-06-18 00:00 | 359 |
| 361 | 0 | ETAPA 5: Despliegue en Producción y Soporte Técnico - Módulos PRI | 15.43d | 2019-06-21 00:00 | 2019-07-10 00:00 | 339 |
| 362 | 0 | Soporte en Producción | 10d | 2019-06-21 00:00 | 2019-07-04 00:00 |  |
| 363 | 0 | Soporte durante la Salida a Producción | 5d | 2019-06-21 00:00 | 2019-06-28 00:00 |  |
| 364 | 0 | Resolver incidentes críticos | 3d | 2019-06-28 00:00 | 2019-07-02 00:00 | 363 |
| 365 | 0 | Entregar el soporte y Administración al cliente | 2d | 2019-07-02 00:00 | 2019-07-04 00:00 | 364 |
| 366 | 0 | Mejora Continua | 15d | 2019-06-21 00:00 | 2019-07-10 00:00 | 339 |
| 367 | 0 | Monitoreo del Sistema y Acompañamiento | 15d | 2019-06-21 00:00 | 2019-07-10 00:00 |  |
| 368 | 0 | Ajustes y Configuraciones finales al Software acorde a necesidades Entidad | 15d | 2019-06-21 00:00 | 2019-07-10 00:00 | 339 |
| 369 | 0 | Cierre de la FASE 3 y Proyecto | 0.43d | 2019-07-10 00:00 | 2019-07-10 00:00 | 366 |
| 370 | 0 | Reunión de Cierre de la FASE 3 y Proyecto | 3h | 2019-07-10 00:00 | 2019-07-10 00:00 |  |
| 371 | 0 | HITO: FIN DE LA FASE 3 y Proyecto | 0d | 2019-07-10 00:00 | 2019-07-10 00:00 | 366 |
